# 自动驾驶管理系统

Schedule from a web Gantt chart, 2026-03-19 to 2026-05-16.
Every day is a working day
武汉AVP项目，自动驾驶管理系统

## Schedule

| ID | WBS | Task | Type | Duration | Start | Finish | Complete | inPeople |
| --- | --- | --- | --- | --- | --- | --- | --- | --- |
| 2 | 1 | **AVP平台** |  | 51d | 2026-03-19 | 2026-05-08 | 1% |  |
| 3 | 1.1 | **代客泊车预约系统 （移动端）** | fixed end | 25d | 2026-04-06 | 2026-04-30 |  |  |
| 4 | 1.1.1 | **首页** |  | 18d | 2026-04-06 | 2026-04-23 |  |  |
| 5 | 1.1.1.1 | 登录注册 |  | 2d | 2026-04-06 | 2026-04-07 |  | 中汽研 |
| 6 | 1.1.1.2 | 用户定位展示 |  | 2d | 2026-04-07 | 2026-04-08 |  | 中汽研 |
| 7 | 1.1.1.3 | 车辆定位展示 |  | 2d | 2026-04-09 | 2026-04-10 |  | 亿连 |
| 8 | 1.1.1.4 | 停车场分布展示 |  | 2d | 2026-04-13 | 2026-04-14 |  | 亿连 |
| 9 | 1.1.1.5 | 车辆状态展示 |  | 3d | 2026-04-15 | 2026-04-17 |  | 亿连 |
| 10 | 1.1.1.6 | 一键泊车 |  | 5d | 2026-04-17 | 2026-04-21 |  | 亿连 |
| 11 | 1.1.1.7 | 一键召车 |  | 5d | 2026-04-17 | 2026-04-21 |  | 亿连 |
| 12 | 1.1.1.8 | 过程跟踪 |  | 3d | 2026-04-21 | 2026-04-23 |  | 亿连 |
| 13 | 1.1.2 | **个人中心** |  | 8d | 2026-04-23 | 2026-04-30 |  |  |
| 14 | 1.1.2.1 | 车辆管理 |  | 2d | 2026-04-23 | 2026-04-24 |  | 中汽研 |
| 15 | 1.1.2.2 | 预警管理 |  | 2d | 2026-04-25 | 2026-04-26 |  | 亿连 |
| 16 | 1.1.2.3 | 泊车记录 |  | 2d | 2026-04-27 | 2026-04-28 |  | 亿连 |
| 17 | 1.1.2.4 | 召车记录 |  | 2d | 2026-04-29 | 2026-04-30 |  | 亿连 |
| 18 | 1.2 | **代客泊车管理系统 （web端）** | fixed end | 33d | 2026-03-19 | 2026-04-20 | 2% |  |
| 19 | 1.2.1 | **首页概要** |  | 7d | 2026-03-19 | 2026-03-25 | 8% |  |
| 20 | 1.2.1.1 | 停车场统计信息 |  | 1d | 2026-03-19 | 2026-03-19 | 100% | 中汽研 |
| 21 | 1.2.1.2 | 客户统计信息 |  | 1d | 2026-03-20 | 2026-03-20 |  | 亿连 |
| 22 | 1.2.1.3 | 车辆统计信息 |  | 1d | 2026-03-21 | 2026-03-21 |  | 中汽研 |
| 23 | 1.2.1.4 | 停车场3D可视化 |  | 1d | 2026-03-22 | 2026-03-22 |  | 亿连 |
| 24 | 1.2.1.5 | 可预约车位信息 |  | 1d | 2026-03-23 | 2026-03-23 |  | 亿连 |
| 25 | 1.2.1.6 | 在场AVP车辆信息 |  | 1d | 2026-03-24 | 2026-03-24 |  | 中汽研 |
| 26 | 1.2.1.7 | 在场AVP车辆预警信息 |  | 1d | 2026-03-25 | 2026-03-25 |  | 亿连 |
| 27 | 1.2.2 | 预约管理 |  | 1d | 2026-03-26 | 2026-03-26 |  | 中汽研 |

Notes:
- 5: 支持微信用户一键注册和登录，通过获取微信用户手机号完成快速注册及登录。
- 6: 获取用户手机定位权限，实时展示用户位置信息。
- 7: 获取用户车辆定位权限，实时展示用户车辆位置信息。
- 8: 展示支持代客泊车停车场列表，3D可视化停车场相关数据。
- 9: 展示代客泊车车辆当前任务状态。
- 10: 向代客泊车车辆下发泊车指令并完成一键泊车，支持手动选择泊位、智能分配泊位、记忆泊车三种方式。
- 11: 向代客泊车车辆下发召车指令并完成一键召车，支持手动选择接驾点位。
- 12: 支持实时跟踪车辆泊车过程及接驾过程，掌握车辆实时动态情况。
- 14: 用户代客泊车车辆信息维护管理，主要功能包括：车辆列表查看、车辆添加、车辆编辑、车辆删除等功能。
- 15: 查询代客泊车车辆泊车和接驾过程中历史所产生的预警信息。
- 16: 查看代客泊车车辆历史泊车记录，回放泊车过程。
- 17: 查看代客泊车车辆历史召车记录，回放接驾过程。
- 20: 统计接入代客泊车系统停车场相关数据，主要功能包括：停车场数量统计、泊位数量统计、高精及特征地图更新统计、已预约泊位统计、可预约泊位统计、已占用泊位统计等功能。
- 21: 统计代客泊车系统接入客户相关数据，主要功能包括：接入客户数量统计、接入客户下载地图数量统计、接入客户预约泊位数量统计等功能。
- 22: 统计代客泊车系统接入车辆相关数据，主要功能包括：预约车辆数量统计、泊车中车辆数量统计、泊位中车辆数量统计、接驾中车辆数量统计等功能。
- 23: 渲染展示各停车场3D建模及相关数据信息，主要功能包括：停车场3D可视化、代客泊车车辆实时跟踪、停车场楼层切换、泊位及状态信息查看等功能。
- 24: 实时展示所选停车场当前可预约的车位信息。
- 25: 实时展示所选停车场当前在场的代客泊车车辆信息。
- 26: 实时展示所选停车场当前代客泊车车辆所产生的预警信息。
- 27: 管理代客泊车车辆车位预约信息，主要功能包括：预约列表查看、预约列表查询、预约车位占用状态释放、预约车位规划路径查看等功能。

| ID | WBS | Task | Duration | Start | Finish | inPeople |
| --- | --- | --- | --- | --- | --- | --- |
| 28 | 1.2.3 | **场端管理** | 6d | 2026-03-27 | 2026-04-01 |  |
| 29 | 1.2.3.1 | 停车场管理 | 1d | 2026-03-27 | 2026-03-27 | 中汽研 |
| 30 | 1.2.3.2 | 出入口管理 | 1d | 2026-03-28 | 2026-03-28 | 中汽研 |
| 31 | 1.2.3.3 | 停车楼层管理 | 1d | 2026-03-29 | 2026-03-29 | 中汽研 |
| 32 | 1.2.3.4 | 停车区域管理 | 1d | 2026-03-30 | 2026-03-30 | 中汽研 |
| 33 | 1.2.3.5 | 停车位管理 | 1d | 2026-03-31 | 2026-03-31 | 中汽研 |
| 34 | 1.2.3.6 | 道闸管理 | 1d | 2026-04-01 | 2026-04-01 | 中汽研 |
| 35 | 1.2.4 | **地图管理** | 3d | 2026-04-02 | 2026-04-04 |  |
| 36 | 1.2.4.1 | 高精地图管理 | 2d | 2026-04-02 | 2026-04-03 | 亿连 |
| 37 | 1.2.4.2 | 特征地图管理 | 2d | 2026-04-03 | 2026-04-04 | 亿连 |
| 38 | 1.2.5 | **客户管理** | 2d | 2026-04-05 | 2026-04-06 |  |
| 39 | 1.2.5.1 | 泊车用户管理 | 1d | 2026-04-05 | 2026-04-05 | 中汽研 |
| 40 | 1.2.5.2 | 泊车客户管理 | 1d | 2026-04-06 | 2026-04-06 | 中汽研 |
| 41 | 1.2.6 | 车辆管理 | 1d | 2026-04-07 | 2026-04-07 | 中汽研 |
| 42 | 1.2.7 | 预警管理 | 1d | 2026-04-08 | 2026-04-08 | 中汽研 |
| 43 | 1.2.8 | **算法模块** | 5d | 2026-04-09 | 2026-04-13 |  |
| 44 | 1.2.8.1 | 路径规划算法 | 3d | 2026-04-09 | 2026-04-11 | 重理工 |
| 45 | 1.2.8.2 | 泊位分配算法 | 3d | 2026-04-11 | 2026-04-13 | 重理工 |
| 46 | 1.2.9 | **信息发布模块** | 3d | 2026-04-13 | 2026-04-15 |  |
| 47 | 1.2.9.1 | 路径信息发布 | 2d | 2026-04-13 | 2026-04-14 | 亿连 |
| 48 | 1.2.9.2 | 泊位信息发布 | 2d | 2026-04-14 | 2026-04-15 | 中汽研 |
| 49 | 1.2.9.3 | 预警信息发布 | 2d | 2026-04-14 | 2026-04-15 | 亿连 |
| 50 | 1.2.10 | **地图处理模块** | 5d | 2026-04-16 | 2026-04-20 |  |
| 51 | 1.2.10.1 | 地图解析 | 3d | 2026-04-16 | 2026-04-18 | 重理工 |
| 52 | 1.2.10.2 | 地图渲染 | 3d | 2026-04-18 | 2026-04-20 | 重理工 |

Notes:
- 29: 接入代客泊车系统的停车场信息维护管理，主要功能包括：停车场列表查看、停车场列表查询、添加停车场、编辑停车场、删除停车场、停车场高精地图解析等功能。
- 30: 停车场出入口信息维护管理，主要功能包括：出入口列表查看、出入口列表查询、添加出入口、编辑出入口、删除出入口等功能。
- 31: 停车楼层信息维护管理，主要功能包括：停车楼层列表查看、停车楼层列表查询、添加停车楼层、编辑停车楼层、删除停车楼层等功能。
- 32: 停车区域信息维护管理，主要功能包括：停车区域列表查看、停车区域列表查询、添加区域楼层、编辑区域楼层、删除停车区域等功能。
- 33: 停车位信息维护管理，主要功能包括：停车位列表查看、停车位列表查询、添加停车位、编辑停车位、删除停车位等功能。
- 34: 接入代客泊车系统道闸信息维护管理，主要功能包括：道闸列表查看、道闸列表查询、添加道闸、编辑道闸、删除道闸等功能。
- 36: 代客泊车停车场高精度地图信息维护管理，主要功能包括：高精地图列表查看、高精地图列表查询、添加高精地图、编辑高精地图、删除高精地图、下载高精地图等功能。
- 37: 代客泊车停车场特征地图信息维护管理，主要功能包括：特征地图列表查看、特征地图列表查询、添加特征地图、编辑特征地图、删除特征地图、下载特征地图等功能。
- 39: 代客泊车预约系统用户管理，主要功能包括：用户列表查看、用户列表查询、添加用户、编辑用户、删除用户、冻结用户、解冻用户等功能。
- 40: 代客泊车系统企业客户管理，主要功能包括：客户列表查看、客户列表查询、添加客户、编辑客户、删除客户、冻结客户、解冻客户等功能。
- 41: 代客泊车车辆信息维护管理，主要功能包括：车辆列表查看、车辆列表查询、车辆泊车记录查看、车辆接驾记录查看等功能。
- 42: 代客泊车车辆预警信息管理，主要功能包括：预警列表查看、预警列表查询、预警内容及位置查看等功能。
- 44: 基于高精地图，根据车辆当前位置与泊位位置和接驾点位位置规划最优全局路径并形成路径文件。
- 45: 基于高精地图，根据车辆当前位置与停车场车位占用情况，就近分配泊位。
- 47: 向用户车辆下发全局规划路径信息。
- 48: 向用户发布各停车场空闲车辆信息。
- 49: 向用户或停车场管理员发布代客泊车车辆行驶过程中产生的相关预警信息。
- 51: 反向解析停车场高精地图文件，自动生成停车场相关数据信息。
- 52: 渲染shp格式及xodr格式高精度地图文件，停车场动静数据可视化。

| ID | WBS | Task | Type | Duration | Start | Finish | inPeople |
| --- | --- | --- | --- | --- | --- | --- | --- |
| 53 | 1.3 | **信息服务系统 （web端）** | fixed end | 31d | 2026-03-27 | 2026-04-26 |  |
| 54 | 1.3.1 | **Map地图云服务** |  | 5d | 2026-04-20 | 2026-04-24 |  |
| 55 | 1.3.1.1 | 地图概览 |  | 1d | 2026-04-20 | 2026-04-20 | 中汽研 |
| 56 | 1.3.1.2 | 地图分组 |  | 1d | 2026-04-21 | 2026-04-21 | 中汽研 |
| 57 | 1.3.1.3 | 导入地图 |  | 1d | 2026-04-22 | 2026-04-22 | 中汽研 |
| 58 | 1.3.1.4 | 导出地图 |  | 1d | 2026-04-23 | 2026-04-23 | 中汽研 |
| 59 | 1.3.1.5 | 地图下发 |  | 1d | 2026-04-24 | 2026-04-24 | 中汽研 |
| 60 | 1.3.2 | **交通事件管理** |  | 2d | 2026-04-24 | 2026-04-25 |  |
| 61 | 1.3.2.1 | 事件动态管理 |  | 1d | 2026-04-24 | 2026-04-24 | 中汽研 |
| 62 | 1.3.2.2 | 事件发布记录 |  | 1d | 2026-04-25 | 2026-04-25 | 中汽研 |
| 63 | 1.3.2.3 | 自动转发规则 |  | 1d | 2026-04-25 | 2026-04-25 | 中汽研 |
| 64 | 1.3.3 | **标志标牌管理** |  | 31d | 2026-03-27 | 2026-04-26 |  |
| 65 | 1.3.3.1 | 标志标牌资源概览 |  | 1d | 2026-04-26 | 2026-04-26 |  |
| 66 | 1.3.3.2 | 导入标志标牌资源 |  | 1d | 2026-03-27 | 2026-03-27 |  |
| 67 | 1.3.3.3 | 标志标牌任务下发 |  | 1d | 2026-03-28 | 2026-03-28 |  |
| 68 | 1.4 | **应用管理系统 （web端）** | fixed end | 11d | 2026-04-28 | 2026-05-08 |  |
| 69 | 1.4.1 | **统一账户管理** |  | 3d | 2026-04-28 | 2026-04-30 |  |
| 70 | 1.4.1.1 | 组织管理 |  | 1d | 2026-04-28 | 2026-04-28 |  |
| 71 | 1.4.1.2 | 用户管理 |  | 1d | 2026-04-29 | 2026-04-29 |  |
| 72 | 1.4.1.3 | 角色管理 |  | 1d | 2026-04-30 | 2026-04-30 |  |
| 73 | 1.4.2 | **设备接入管理** |  | 8d | 2026-05-01 | 2026-05-08 |  |
| 74 | 1.4.2.1 | 设备类型管理 |  | 2d | 2026-05-01 | 2026-05-02 |  |
| 75 | 1.4.2.2 | 产品管理 |  | 3d | 2026-05-03 | 2026-05-05 |  |
| 76 | 1.4.2.3 | 设备管理 |  | 3d | 2026-05-05 | 2026-05-07 |  |
| 77 | 1.4.2.4 | 协议管理 |  | 1d | 2026-05-08 | 2026-05-08 |  |

Notes:
- 55: 获取页面范围显示区域的地图节点点位、路段信息，在卫星底图上进行可视化展示。地图列表查看、地图列表查询、地图模式切换、详情查看、删除。
- 56: 可由用户自定义地图 MAP 信息归属组别。支持分组列表查看、分组列表查询、新建分组、删除分组、分组管理、详情查看。
- 57: 用户导入按照 map 文件格式要求的 json 文件，导入成功后纳入平台地图管理。解析后存储在数据库，支持在线完善属性值信息。支持导入地图文件、地图版本唯一性校验、填写属性信息。
- 58: 用户可导出平台生成的 MAP 文件（json 格式），支持按照 Node、按照地图组别、按照参考位置筛选。系统自动生成地图下载链接，提供地图文件包。
- 59: 支持向场端 RSU 设备下发 V2X 地图，同时支持按设备发布地图任务、按地图节点发布地图任务。任务列表查看、任务列表查询、添加发布任务、重发发布任务、任务详情查看。
- 61: 系统自动生成交通事件发布情况提供动态滚动播报记录，为用户实现车路协同交通事件运营服务。支持事件列表查看、事件位置查看、事件详情查看。
- 62: 支持对人工、设备上报、第三方上报交通事件情况列表化浏览，以及取消事件、删除记录、清除事件内容操作。
- 63: 配置平台收到由设备或者第三方接入数据创建的事件转发规则。按照事件类型区分不同响应策略。支持转发规则列表查看、转发规则列表查询、转发规则编辑、转发规则取消。

| ID | WBS | Task | Type | Duration | Start | Finish | inPeople |
| --- | --- | --- | --- | --- | --- | --- | --- |
| 78 | 2 | **路侧融合感知系统** | fixed end | 48d | 2026-03-19 | 2026-05-05 |  |
| 79 | 2.1 | 感知子系统 |  | 13d | 2026-03-19 | 2026-03-31 | 重理工 |
| 80 | 2.2 | 边缘计算子系统 |  | 18d | 2026-03-31 | 2026-04-17 | 重理工 |
| 81 | 2.3 | 传输子系统 |  | 19d | 2026-04-17 | 2026-05-05 | 重理工 |
| 82 | 3 | **高精地图** | fixed end | 17d | 2026-04-01 | 2026-04-17 |  |
| 83 | 3.1 | 采集范围 |  | 2d | 2026-04-01 | 2026-04-02 | 图商 |
| 84 | 3.2 | 地图要素 |  | 3d | 2026-04-03 | 2026-04-05 | 图商 |
| 85 | 3.3 | 数据结构 |  | 6d | 2026-04-06 | 2026-04-11 | 图商 |
| 86 | 3.4 | 数据格式 |  | 4d | 2026-04-11 | 2026-04-14 | 图商 |
| 87 | 3.5 | 数据精度 |  | 3d | 2026-04-15 | 2026-04-17 | 图商 |
| 88 | 4 | **车辆对接** | fixed end | 12d | 2026-04-06 | 2026-04-17 |  |
| 89 | 4.1 | 标准接口 |  | 5d | 2026-04-06 | 2026-04-10 | 重理工 |
| 90 | 4.2 | 对接萝卜快跑 |  | 8d | 2026-04-10 | 2026-04-17 | 重理工 |
| 91 | 5 | **测试阶段** |  | 58d | 2026-03-19 | 2026-05-15 |  |
| 92 | 5.1 | 单元测试 |  | 51d | 2026-03-19 | 2026-05-08 | 重理工、亿连 |
| 93 | 5.2 | 集成测试 |  | 11d | 2026-05-05 | 2026-05-15 | 重理工、亿连 |
| 94 | 5.3 | 系统测试 |  | 11d | 2026-05-05 | 2026-05-15 | 重理工 |
| 95 | 5.4 | Bug修复 |  | 11d | 2026-05-05 | 2026-05-15 | 重理工 |
| 96 | 6 | **部署上线** | fixed end | 7d | 2026-05-10 | 2026-05-16 |  |
| 97 | 6.1 | 生产环境部署 |  | 7d | 2026-05-10 | 2026-05-16 | 重理工 |
| 98 | 6.2 | 上线验证 |  | 7d | 2026-05-10 | 2026-05-16 | 重理工 |
| 99 | 6.3 | 项目交付 | fixed end | 7d | 2026-05-10 | 2026-05-16 | 亿连、重理工 |

Notes:
- 79: 该子系统包含工业摄像机、毫米波雷达、激光雷达等感知终端设备。
- 80: 该子系统是指路侧边缘计算单元，它对感知子系统所采集的数据进行融合计算。路侧 边缘计算单元安装于路口机柜内，接入汇聚交换机。
- 81: 该子系统包含路侧通信单元RSU、交换机以及网络和光缆。路侧通信单元 RSU 一般安装在路侧杆件上，实际布置时应以不影响设备正常功能无遮挡为前提，根据路况、施工便利程度进行调整，主要提供 V2X短距离无线通信能力。交换机安装于机柜内，提供接入和汇聚能力。设备接入采用网线，交换机之间采用光 缆连接，线缆采用相应的管、盒提供保护能力。
- 83: 高精度地图数据应包括道路属性数据、几何数据、关联关系数据。道路属性数据应包 括车道模型数据(类型、通行状态、数量和通行方向等)和车道线模型数据(类型、颜色、 宽度和编号等)。
- 84: 高精度地图数据采集制作范围应包含各类道路、道路附属设施数据、进出停车场外延 道路数据、停车要素数据。
- 85: 高精度地图数据应包括道路属性数据、几何数据、关联关系数据。道路属性数据应包 括车道模型数据(类型、通行状态、数量和通行方向等)和车道线模型数据(类型、颜色、 宽度和编号等)。
- 86: 高精度地图数据应包括但不限于：矢量数据、激光点云数据、视觉数据、全景照片、 三维模型数据、opendrive 或 NDS 数据，支持生成 shp 文件与匹配的geo.json 格式数据文件。
- 87: 高精度地图采用CGCS2000 坐标，数据精度需保证绝对精度≤0.8m, 相对精度≤0.2m。高精度地图中涉及的所有道路、车位、立柱、墙体等位置应是全量数据，不在制图范 围内的路段，应至少采集300m 或不足300m 的应采集至下一个区域。高精度地图应满足具备主流设备厂家或者集成厂家使用的要求。
- 89: AVP 系统所实现的功能旨在为车端提供AVP 代客泊车相关服务，主要为车端提供AVP 停车场的车位预约服务、高精度地图服务、自动泊车和接驾路径规划服务，该三类服务为 车端提供的标准对接接口。支持代客泊车的车辆需要车企或运营方提供，不在AVP 软件系 统建设范围内。
- 90: 在萝卜快跑车辆运营方开放数据接口，支持本项目与其做数据对接的前提下，本项目 拟计划与萝卜快跑车辆对接，实现数据共享，支持萝卜快跑车辆进入研发基地地上地下指 定车位，实现自动泊车。
- 97: 武汉项目现场本地化服务器部署
